# BR 05 - Sub-Procesos MultiInstancia

Schedule from MS Project XML, 2010-07-05 to 2010-09-03, costs in $, A marks actual dates.

## Calendars

- Standard: Mon-Fri 08:00-12:00, 13:00-17:00; Sat-Sun off. Exceptions (off unless hours are given): 2010-07-20 (Festivo), 2010-08-16 (Festivo).

## Resources

| Resource | Rate |
| --- | --- |
| Unassigned |  |
| Angela Janeth Archila Rincon | 10 |
| Anwar Saud Hussein Ibañez Okamell | 10 |
| Carlos Alberto Muñoz Perafan | 10 |
| David Alejandro Montoya Roberto | 10 |
| David Espinal Ruiz | 10 |
| Diego Enrique Parra Leal | 10 |
| Eduardo de Jesus Daza Castillo | 10 |
| Fredy Alberto Vasquez Galeano | 10 |
| Jaime Orlando Bocanegra Delgado | 10 |
| Jorge Enrique Galindez | 10 |
| Jose Alcides Aranzazu Montoya | 10 |
| Juan Carlos Mendez Camacho | 10 |
| Juan Pablo Crossley Orduz | 10 |
| Lácides Adolfo Guzmán Paternina | 10 |
| Leonardo Bayona Martinez | 10 |
| Manuel Fernando Jimenez Zamora | 10 |
| Manuel Molano | 10 |
| Mario Elkin Rodriguez Alarcon | 10 |
| Raul Antonio Pardo Alvarez | 10 |
| Ruben Javier Gaviria Agredo | 10 |
| William Alexander Rivera Lopez | 10 |

## Schedule

| ID | WBS | Task | Duration | Start | Finish | Predecessors | Complete | Remaining | Total slack | Resources | Work | Actual work | Cost | Actual cost |
| --- | --- | --- | --- | --- | --- | --- | --- | --- | --- | --- | --- | --- | --- | --- |
| 1 | 1 | **BR 05 - Sub-Procesos MultiInstancia** | 42.5d | 2010-07-05 08:00 A | 2010-09-03 12:00 |  | 18% | 34.71d | 0d |  | 528h | 96.8h | 5,280 | 968 |
| 2 | 1.1 | **BPMS** | 42.5d | 2010-07-05 08:00 A | 2010-09-03 12:00 |  | 16% | 35.9d | 0d |  | 340h | 52.8h | 3,400 | 528 |
| 3 | 1.1.1 | Requerimientos | 3d | 2010-07-05 08:00 A | 2010-07-07 17:00 A |  | 100% |  |  | Juan Pablo Crossley Orduz | 24h | 24h | 240 | 240 |
| 4 | 1.1.2 | **Ciclo I** | 13d | 2010-07-08 08:00 A | 2010-07-27 17:00 |  | 28% | 9.4d | 0d |  | 104h | 28.8h | 1,040 | 288 |
| 5 | 1.1.2.1 | Analisis de Requerimientos | 2d | 2010-07-08 08:00 A | 2010-07-09 17:00 A | 3 | 100% |  |  | Juan Pablo Crossley Orduz | 16h | 16h | 160 | 160 |
| 6 | 1.1.2.2 | **Diseño** | 4d | 2010-07-12 08:00 A | 2010-07-15 17:00 | 5 | 40% | 2.4d | 0d |  | 32h | 12.8h | 320 | 128 |
| 7 | 1.1.2.2.1 | Comun | 2d | 2010-07-12 08:00 A | 2010-07-13 17:00 |  | 80% | 0.4d | 0d | Juan Pablo Crossley Orduz | 16h | 12.8h | 160 | 128 |
| 8 | 1.1.2.2.2 | .NET | 1d | 2010-07-14 08:00 | 2010-07-14 17:00 | 7 |  |  | 0d | Juan Pablo Crossley Orduz | 8h |  | 80 |  |
| 9 | 1.1.2.2.3 | Java | 1d | 2010-07-15 08:00 | 2010-07-15 17:00 | 8 |  |  | 0d | Juan Pablo Crossley Orduz | 8h |  | 80 |  |
| 10 | 1.1.2.3 | Implementacion .NET | 2d | 2010-07-16 08:00 | 2010-07-19 17:00 | 6 |  |  | 0d | Juan Pablo Crossley Orduz | 16h |  | 160 |  |
| 11 | 1.1.2.4 | Implementacion Java | 2d | 2010-07-21 08:00 | 2010-07-22 17:00 | 10 |  |  | 0d | Juan Pablo Crossley Orduz | 16h |  | 160 |  |
| 12 | 1.1.2.5 | Pruebas | 2d | 2010-07-23 08:00 | 2010-07-26 17:00 | 11 |  |  | 0d | Juan Pablo Crossley Orduz | 16h |  | 160 |  |
| 13 | 1.1.2.6 | Retroalimentar Documentos | 1d | 2010-07-27 08:00 | 2010-07-27 17:00 | 12 |  |  | 0d | Juan Pablo Crossley Orduz | 8h |  | 80 |  |
| 14 | 1.1.3 | **Ciclo II** | 14d | 2010-07-28 08:00 | 2010-08-17 17:00 | 4 |  |  | 0d |  | 112h |  | 1,120 |  |
| 15 | 1.1.3.1 | Analisis de Requerimientos | 1d | 2010-07-28 08:00 | 2010-07-28 17:00 |  |  |  | 0d | Juan Pablo Crossley Orduz | 8h |  | 80 |  |
| 16 | 1.1.3.2 | **Diseño** | 3d | 2010-07-29 08:00 | 2010-08-02 17:00 | 15 |  |  | 0d |  | 24h |  | 240 |  |
| 17 | 1.1.3.2.1 | Comun | 2d | 2010-07-29 08:00 | 2010-07-30 17:00 |  |  |  | 0d | Juan Pablo Crossley Orduz | 16h |  | 160 |  |
| 18 | 1.1.3.2.2 | .NET | 0.5d | 2010-08-02 08:00 | 2010-08-02 12:00 | 17 |  |  | 0d | Juan Pablo Crossley Orduz | 4h |  | 40 |  |
| 19 | 1.1.3.2.3 | Java | 0.5d | 2010-08-02 13:00 | 2010-08-02 17:00 | 18 |  |  | 0d | Juan Pablo Crossley Orduz | 4h |  | 40 |  |
| 20 | 1.1.3.3 | Implementacion .NET | 4d | 2010-08-03 08:00 | 2010-08-06 17:00 | 16 |  |  | 0d | Juan Pablo Crossley Orduz | 32h |  | 320 |  |
| 21 | 1.1.3.4 | Implementacion Java | 3d | 2010-08-09 08:00 | 2010-08-11 17:00 | 20 |  |  | 0d | Juan Pablo Crossley Orduz | 24h |  | 240 |  |
| 22 | 1.1.3.5 | Pruebas | 2d | 2010-08-12 08:00 | 2010-08-13 17:00 | 21 |  |  | 0d | Juan Pablo Crossley Orduz | 16h |  | 160 |  |
| 23 | 1.1.3.6 | Retroalimentar Documentos | 1d | 2010-08-17 08:00 | 2010-08-17 17:00 | 22 |  |  | 0d | Juan Pablo Crossley Orduz | 8h |  | 80 |  |
| 24 | 1.1.4 | **Ciclo III** | 12.5d | 2010-08-18 08:00 | 2010-09-03 12:00 | 14 |  |  | 0d |  | 100h |  | 1,000 |  |
| 25 | 1.1.4.1 | Analisis de Requerimientos | 1d | 2010-08-18 08:00 | 2010-08-18 17:00 |  |  |  | 0d | Juan Pablo Crossley Orduz | 8h |  | 80 |  |

| ID | WBS | Task | Duration | Start | Finish | Predecessors | Complete | Remaining | Total slack | Free slack | Constraint | Resources | Work | Actual work | Cost | Actual cost |
| --- | --- | --- | --- | --- | --- | --- | --- | --- | --- | --- | --- | --- | --- | --- | --- | --- |
| 26 | 1.1.4.2 | **Diseño** | 4d | 2010-08-19 08:00 | 2010-08-24 17:00 | 25 |  |  | 0d |  |  |  | 32h |  | 320 |  |
| 27 | 1.1.4.2.1 | Comun | 2d | 2010-08-19 08:00 | 2010-08-20 17:00 |  |  |  | 0d |  |  | Juan Pablo Crossley Orduz | 16h |  | 160 |  |
| 28 | 1.1.4.2.2 | .NET | 1d | 2010-08-23 08:00 | 2010-08-23 17:00 | 27 |  |  | 0d |  |  | Juan Pablo Crossley Orduz | 8h |  | 80 |  |
| 29 | 1.1.4.2.3 | Java | 1d | 2010-08-24 08:00 | 2010-08-24 17:00 | 28 |  |  | 0d |  |  | Juan Pablo Crossley Orduz | 8h |  | 80 |  |
| 30 | 1.1.4.3 | Implementacion .NET | 3d | 2010-08-25 08:00 | 2010-08-27 17:00 | 26 |  |  | 0d |  |  | Juan Pablo Crossley Orduz | 24h |  | 240 |  |
| 31 | 1.1.4.4 | Implementacion Java | 2d | 2010-08-30 08:00 | 2010-08-31 17:00 | 30 |  |  | 0d |  |  | Juan Pablo Crossley Orduz | 16h |  | 160 |  |
| 32 | 1.1.4.5 | Pruebas | 2d | 2010-09-01 08:00 | 2010-09-02 17:00 | 31 |  |  | 0d |  |  | Juan Pablo Crossley Orduz | 16h |  | 160 |  |
| 33 | 1.1.4.6 | Retroalimentar Documentos | 0.5d | 2010-09-03 08:00 | 2010-09-03 12:00 | 32 |  |  | 0d |  |  | Juan Pablo Crossley Orduz | 4h |  | 40 |  |
| 34 | 1.2 | **BAS** | 37d | 2010-07-05 08:00 A | 2010-08-26 17:00 |  | 23% | 28.34d | 5.5d |  |  |  | 188h | 44h | 1,880 | 440 |
| 35 | 1.2.1 | **Fase de Analisis** | 4.5d | 2010-07-05 08:00 A | 2010-07-09 12:00 A |  | 100% |  |  |  |  |  | 36h | 36h | 360 | 360 |
| 36 | 1.2.1.1 | Analisis | 3d | 2010-07-05 08:00 A | 2010-07-07 17:00 A |  | 100% |  |  |  |  | Fredy Alberto Vasquez Galeano | 24h | 24h | 240 | 240 |
| 37 | 1.2.1.2 | Elaboracion del Documento de Analisis | 1d | 2010-07-08 08:00 A | 2010-07-08 17:00 A | 36 | 100% |  |  |  |  | Fredy Alberto Vasquez Galeano | 8h | 8h | 80 | 80 |
| 38 | 1.2.1.3 | Inspeccion del Analisis | 0.5d | 2010-07-09 08:00 A | 2010-07-09 12:00 A | 37 | 100% |  |  |  |  | Fredy Alberto Vasquez Galeano | 4h | 4h | 40 | 40 |
| 39 | 1.2.2 | Planeacion | 1d | 2010-07-09 13:00 A | 2010-07-12 12:00 A | 35 | 100% |  |  |  |  | Fredy Alberto Vasquez Galeano | 8h | 8h | 80 | 80 |
| 40 | 1.2.3 | **Fase de Diseño** | 4.5d | 2010-08-02 08:00 | 2010-08-06 12:00 | 39 |  |  | 5.5d | 0d |  |  | 36h |  | 360 |  |
| 41 | 1.2.3.1 | Diseño | 3d | 2010-08-02 08:00 | 2010-08-04 17:00 |  |  |  | 5.5d | 0d | start no earlier than 2010-08-02 03:00 | Fredy Alberto Vasquez Galeano | 24h |  | 240 |  |
| 42 | 1.2.3.2 | Elaboracion del Documento de Diseño | 1d | 2010-08-05 08:00 | 2010-08-05 17:00 | 41 |  |  | 5.5d | 0d |  | Fredy Alberto Vasquez Galeano | 8h |  | 80 |  |
| 43 | 1.2.3.3 | Inspeccion del Diseño | 0.5d | 2010-08-06 08:00 | 2010-08-06 12:00 | 42 |  |  | 5.5d |  |  | Fredy Alberto Vasquez Galeano | 4h |  | 40 |  |
| 44 | 1.2.4 | **Fase de Implementacion** | 11d | 2010-08-06 13:00 | 2010-08-24 12:00 | 40 |  |  | 5.5d | 0d |  |  | 88h |  | 880 |  |
| 45 | 1.2.4.1 | Nuevo Wizard de Subprocesos | 4d | 2010-08-09 15:00 | 2010-08-13 15:00 | 48 |  |  | 5.5d | 0d |  | Fredy Alberto Vasquez Galeano | 32h |  | 320 |  |
| 46 | 1.2.4.2 | Definir el número de instancias a crear en el múltiple de subprocesos | 0.5d | 2010-08-06 13:00 | 2010-08-06 17:00 |  |  |  | 5.5d | 0d |  | Fredy Alberto Vasquez Galeano | 4h |  | 40 |  |
| 47 | 1.2.4.3 | Habilitar ejecución de Múltiples en secuencia | 0.5d | 2010-08-09 08:00 | 2010-08-09 12:00 | 46 |  |  | 5.5d | 0d |  | Fredy Alberto Vasquez Galeano | 4h |  | 40 |  |
| 48 | 1.2.4.4 | Condición de flujo 'One' | 0.25d | 2010-08-09 13:00 | 2010-08-09 15:00 | 47 |  |  | 5.5d | 0d |  | Fredy Alberto Vasquez Galeano | 2h |  | 20 |  |
| 49 | 1.2.4.5 | Agregar la opción clearSubProcessMultiInstances al Wizard de Subprocesos | 0.25d | 2010-08-13 15:00 | 2010-08-13 17:00 | 45, 48 |  |  | 5.5d | 0d |  | Fredy Alberto Vasquez Galeano | 2h |  | 20 |  |
| 50 | 1.2.4.6 | Agregar la opción de agrupar por varios atributos al Wizard de Subprocesos | 1d | 2010-08-17 08:00 | 2010-08-17 17:00 | 49 |  |  | 5.5d | 0d |  | Fredy Alberto Vasquez Galeano | 8h |  | 80 |  |
| 51 | 1.2.4.7 | Desplegar el diálogo que permite personalizar las columnas de la lista de subprocesos en el Wizard de Subprocesos | 0.5d | 2010-08-18 08:00 | 2010-08-18 12:00 | 50 |  |  | 5.5d | 0d |  | Fredy Alberto Vasquez Galeano | 4h |  | 40 |  |
| 52 | 1.2.4.8 | Multiple instancias de Actividades | 3d | 2010-08-18 13:00 | 2010-08-23 12:00 | 51 |  |  | 5.5d | 0d |  | Fredy Alberto Vasquez Galeano | 24h |  | 240 |  |
| 53 | 1.2.4.9 | Incluir loop de actividades en el modeler | 1d | 2010-08-23 13:00 | 2010-08-24 12:00 | 52 |  |  | 5.5d |  |  | William Alexander Rivera Lopez | 8h |  | 80 |  |
| 54 | 1.2.5 | Fase de Pruebas | 1d | 2010-08-24 13:00 | 2010-08-25 12:00 | 44 |  |  | 5.5d | 0d |  | Fredy Alberto Vasquez Galeano | 8h |  | 80 |  |
| 55 | 1.2.6 | Actualizacion de Documentos | 0.5d | 2010-08-25 13:00 | 2010-08-25 17:00 | 54 |  |  | 5.5d | 0d |  | Fredy Alberto Vasquez Galeano | 4h |  | 40 |  |
| 56 | 1.2.7 | Inspeccion de Calidad | 0.5d | 2010-08-26 08:00 | 2010-08-26 12:00 | 55 |  |  | 5.5d | 0d |  | Fredy Alberto Vasquez Galeano | 4h |  | 40 |  |

| ID | WBS | Task | Duration | Start | Finish | Predecessors | Total slack | Free slack | Resources | Work | Cost |
| --- | --- | --- | --- | --- | --- | --- | --- | --- | --- | --- | --- |
| 57 | 1.2.8 | **Release Notes** | 0.5d | 2010-08-26 13:00 | 2010-08-26 17:00 | 56 | 5.5d |  |  | 4h | 40 |
| 58 | 1.2.8.1 | Elaboracion del Documento de Release Notes | 0.25d | 2010-08-26 13:00 | 2010-08-26 15:00 |  | 5.5d | 0d | Fredy Alberto Vasquez Galeano | 2h | 20 |
| 59 | 1.2.8.2 | Inspeccion de Release Notes | 0.25d | 2010-08-26 15:00 | 2010-08-26 17:00 | 58 | 5.5d |  | Fredy Alberto Vasquez Galeano | 2h | 20 |
